# ProyectoDLC

How a schedule from MS Project changed from version to version. A marks actual dates.

## Version 1 (saved 2019-01-08)

Note of the change: Corrige error de formato de DC en metadata_DublinCore.ipynb

| ID | WBS | Task | Duration | Start | Finish | Predecessors | Complete | Total float | Constraint |
| --- | --- | --- | --- | --- | --- | --- | --- | --- | --- |
| 1 | 1 | **Proyecto Calidad del Aire 2018** | 507d | 2017-09-04 A | 2019-01-23 |  | 94% | 376d |  |
| 2 | 1.1 | **1. Creating Data** | 345d | 2017-09-04 A | 2018-12-28 |  | 58% | 286d |  |
| 3 |  | Definición del proyecto | 10d | 2017-09-04 A | 2017-09-15 A |  | 100% |  |  |
| 4 |  | Data Management Plan (DMP) | 10d | 2017-09-18 A | 2017-09-29 A | 3 | 100% |  |  |
| 5 |  | Definición de los metadatos | 3d | 2017-09-20 A | 2017-09-22 | 4SS+2d, 3 | 67% | 616d |  |
| 6 |  | Diagrama de Gantt | 3d | 2017-09-20 A | 2017-09-22 A | 3, 4SS+2d | 100% |  |  |
| 7 |  | Plan de preservación | 5d | 2017-09-25 | 2017-09-29 | 4SS+5d |  |  |  |
| 8 |  | Instalación de los sensores | 60d | 2017-10-02 A | 2017-12-22 | 4, 3 | 50% | 551d |  |
| 9 |  | Revisión del DMP | 4d | 2018-06-18 | 2018-12-28 |  |  |  |  |
| 10 | 1.2 | **2. Processing Data** | 366d | 2018-01-01 A | 2019-01-01 A |  | 100% |  |  |
| 11 |  | Recolección de los datos | 365d | 2018-01-01 A | 2018-12-31 A | 8 | 100% |  | start no earlier than 2018-01-01 |
| 12 |  | Curación de los datos | 365d | 2018-01-02 A | 2019-01-01 A | 11SS+1d | 100% |  | finish no earlier than 2019-01-01 |
| 13 | 1.3 | **3. Analysing Data** | 16d | 2019-01-02 | 2019-01-23 |  |  | 268d |  |
| 14 |  | Análisis y conclusiones de los datos | 10d | 2019-01-02 | 2019-01-15 | 12 |  | 268d |  |
| 15 |  | Presentación del informe 2018 | 1d | 2019-01-23 | 2019-01-23 | 14FS+5d |  | 268d | start no earlier than 2019-01-23 |
| 16 | 1.4 | **4. Preserving Data** | 4d | 2019-01-16 A | 2019-01-21 A |  | 100% |  |  |
| 17 |  | Preservación | 4d | 2019-01-16 A | 2019-01-21 A | 12, 14 | 100% |  |  |
| 18 | 1.5 | **5. Giving Access to Data** | 1d | 2019-01-22 | 2019-01-22 |  |  | 269d |  |
| 19 |  | Subida a la plataforma X | 1d | 2019-01-22 | 2019-01-22 | 17 |  | 269d | start no earlier than 2019-01-22 |
| 20 | 1.6 | **6. Re-Using Data** | 1d | 2018-11-05 | 2018-11-05 |  |  |  |  |
| 21 |  | Proyecto 2019 | 1d | 2018-11-05 | 2018-11-05 |  |  | 291d | start no earlier than 2018-11-05 |
| 22 | 2 | **Proyecto Calidad del Aire 2019** | 456d | 2018-11-05 | 2020-02-03 |  |  | 0d |  |
| 23 | 2.1 | **1. Creating Data** | 299d | 2018-11-05 | 2019-12-26 |  |  | 20d |  |
| 24 |  | Definición del proyecto | 10d | 2018-11-05 | 2018-11-16 | 21SS |  | 291d |  |
| 25 |  | Data Management Plan (DMP) | 20d | 2018-11-19 | 2018-12-14 | 24, 21SS |  | 291d |  |
| 26 |  | Diagrama de Gantt | 2d | 2018-12-17 | 2018-12-18 | 25 |  | 294d |  |
| 27 |  | Definición de los metadatos | 2d | 2018-12-17 | 2018-12-18 | 25 |  | 294d |  |
| 28 |  | Plan de preservación | 5d | 2018-12-17 | 2018-12-21 | 25 |  | 291d |  |
| 29 |  | Revisión y mantenimiento de los sensores | 20d | 2018-12-03 | 2018-12-28 |  |  |  |  |
| 30 |  | Revisión del DMP | 4d | 2019-06-10 | 2019-12-26 |  |  |  |  |
| 31 | 2.2 | **2. Processing Data** | 366d | 2019-01-01 | 2020-01-01 |  |  | 1d |  |
| 32 |  | Recolección de los datos | 365d | 2019-01-01 | 2019-12-31 |  |  | 13d | start no earlier than 2019-01-01 |
| 33 |  | Curación de los datos | 365d | 2019-01-02 | 2020-01-01 | 32SS+1d |  |  |  |
| 34 | 2.3 | **3. Analysing Data** | 11d | 2020-01-15 | 2020-01-29 |  |  |  |  |
| 35 |  | Análisis y conclusiones de los datos | 10d | 2020-01-15 | 2020-01-28 | 33, 21 |  | 0d |  |
| 36 |  | Presentación del informe 2019 | 1d | 2020-01-29 | 2020-01-29 | 35 |  |  |  |
| 37 | 2.4 | **4. Preserving Data** | 4d | 2020-01-29 | 2020-02-03 |  |  | 0d |  |
| 38 |  | Preservación | 4d | 2020-01-29 | 2020-02-03 | 33, 35 |  |  |  |
| 39 | 2.5 | **5. Giving Access to Data** | 1d | 2020-01-29 | 2020-01-29 |  |  | 3d |  |
| 40 |  | Subida a la plataforma X | 1d | 2020-01-29 | 2020-01-29 | 33, 35 |  | 3d |  |
| 41 | 2.6 | **6. Re-Using Data** | 1d | 2019-10-01 | 2019-10-01 |  |  |  |  |
| 42 |  | Proyecto 2020 | 1d | 2019-10-01 | 2019-10-01 |  |  | 89d |  |

## Version 2 (saved 2019-01-16)

Last finish stays 2020-02-03. Complete tasks 6 → 14.

Added:

| ID | Task | Duration | Start | Finish | Predecessors | Constraint | Resources |
| --- | --- | --- | --- | --- | --- | --- | --- |
| 22 | **Planificación Calidad del Aire 2019** | 455d | 2018-11-06 | 2020-02-03 |  |  |  |
| 24 | Revisión del proyecto | 4d | 2018-11-06 | 2018-11-19 | 21 | start no earlier than 2018-10-01 | Elsa Cerezo Fernandez |
| 25 | Revisión Data Management Plan (DMP) | 5d | 2018-11-13 | 2018-11-19 | 24FF |  | Miguel Traspuesto Abascal |
| 26 | Revisión Diagrama de Gantt | 2d | 2018-11-08 | 2018-11-09 | 24SS+2d |  | Razvan Pascal |
| 36 | Actualización UCREA | 4d | 2020-01-29 | 2020-02-03 | 31, 33 |  |  |
| 38 | Repositorio UCREA | 1d | 2020-01-29 | 2020-01-29 | 31, 33 |  |  |

Removed: 22 Proyecto Calidad del Aire 2019; 24 Definición del proyecto; 25 Data Management Plan (DMP); 26 Diagrama de Gantt; 27 Definición de los metadatos; 28 Plan de preservación; 38 Preservación; 40 Subida a la plataforma X

Changed:

| ID | Task | Start | Finish | Duration | Complete | Total float | Predecessors | Other |
| --- | --- | --- | --- | --- | --- | --- | --- | --- |
| 1 | **Planificación Calidad del Aire 2018** |  | 2019-01-23 A |  | 94% → 100% | 376d → none |  | was named Proyecto Calidad del Aire 2018 |
| 2 | **1. Creating Data** |  | 2018-12-28 A |  | 58% → 100% | 286d → none |  |  |
| 3 | Definición del proyecto |  | 2017-09-15 A → 2017-09-29 A (+14d) | 10d → 20d |  |  |  | constraint none → finish no earlier than 2017-09-29 |
| 4 | Data Management Plan (DMP) |  |  |  |  |  | 3 → 3FF |  |
| 5 | Definición de los metadatos |  | 2017-09-22 → 2017-10-02 A (+10d) |  | 67% → 100% | 616d → none |  |  |
| 6 | Diagrama de Gantt |  |  |  |  |  | 3, 4SS+2d → 3SS |  |
| 7 | Plan de preservación | 2017-09-25 A | 2017-09-29 A |  | 0% → 100% |  |  |  |
| 8 | Instalación de los sensores |  | 2017-12-22 A |  | 50% → 100% | 551d → none |  |  |
| 9 | Revisión del DMP | 2018-06-18 A | 2018-12-28 A |  | 0% → 100% |  |  |  |
| 13 | **3. Analysing Data** | 2019-01-02 A | 2019-01-23 A |  | 0% → 100% | 268d → none |  |  |
| 14 | Análisis y conclusiones de los datos | 2019-01-02 A | 2019-01-15 A |  | 0% → 100% | 268d → none |  |  |
| 15 | Presentación del informe 2018 | 2019-01-23 A | 2019-01-23 A |  | 0% → 100% | 268d → none |  |  |
| 17 | Subida a UCREA |  |  |  |  |  |  | was named Preservación |
| 18 | **5. Giving Access to Data** | 2019-01-22 A | 2019-01-22 A |  | 0% → 100% | 269d → none |  |  |
| 19 | Subida a UCREA | 2019-01-22 A | 2019-01-22 A |  | 0% → 100% | 269d → none |  | was named Subida a la plataforma X |
| 20 | **6. Re-Using Data** | 2018-11-05 A | 2018-11-05 A |  | 0% → 100% |  |  |  |
| 21 | Proyecto 2019 | 2018-11-05 A | 2018-11-05 A |  | 0% → 100% | 291d → none |  |  |
| 23 | **1. Creating Data** | 2018-11-05 → 2018-11-06 (+1d) |  | 299d → 298d |  | 20d → 19d |  |  |
